# Sistema Administrador empresas 2

Schedule from MS Project, 2018-09-25 to 2019-01-07, costs in $, A marks actual dates.

## Calendars

- Standard: Mon-Fri 08:00-12:00, 13:00-17:00; Sat-Sun off.

## Resources

| Resource |
| --- |
| Erick Leal |

## Schedule

| ID | WBS | Task | Type | Duration | Start | Finish | Predecessors | Complete | Remaining | Total slack | Free slack | Resources | Work | Actual work | Cost | Actual cost |
| --- | --- | --- | --- | --- | --- | --- | --- | --- | --- | --- | --- | --- | --- | --- | --- | --- |
| 1 | 1 | **Sistema Control Financiero empresa** |  | 58d | 2018-09-25 A | 2018-12-13 |  | 11% | 51.72d |  |  |  | 934h | 76h | 6,538,000 | 532,000 |
| 2 | 1.1 | **Hito I** |  | 1d? | 2018-09-25 A | 2018-09-25 |  | 34% | 0.66d? |  |  |  | 254h | 76h | 1,778,000 | 532,000 |
| 3 | 1.1.1 | Creacion BD | manual | 1.75d | 2018-09-25 A | 2018-09-27 A |  | 100% |  |  |  | Erick Leal | 14h | 14h | 98,000 | 98,000 |
| 4 | 1.1.2 | **Empresas** |  | 2d | 2018-09-27 A | 2018-09-28 |  | 99% | 0d |  |  | Erick Leal | 32h | 16h | 224,000 | 112,000 |
| 5 | 1.1.2.1 | Crud | manual | 1d | 2018-09-27 A | 2018-09-27 A |  | 100% |  |  |  | Erick Leal | 8h | 8h | 56,000 | 56,000 |
| 6 | 1.1.2.2 | Carga de Documentos | manual | 1d | 2018-09-28 A | 2018-09-28 A |  | 100% |  |  |  | Erick Leal | 8h | 8h | 56,000 | 56,000 |
| 7 | 1.1.3 | **Usuarios** |  | 1d? | 2018-09-25 A | 2018-09-25 |  | 38% | 0.62d? |  |  | Erick Leal | 24h | 6h | 168,000 | 42,000 |
| 8 | 1.1.3.1 | Crud |  | 1d | 2018-09-26 A | 2018-09-26 | 9 | 75% | 0.25d | -1d | 0d | Erick Leal | 8h | 6h | 56,000 | 42,000 |
| 9 | 1.1.3.2 | carga de Documentos | manual | 1d? | 2018-09-25 | 2018-09-25 |  |  |  |  |  | Erick Leal | 8h |  | 56,000 |  |
| 10 | 1.1.4 | **Departamentos** |  | 1d | 2018-09-25 A | 2018-09-25 A |  | 100% |  |  |  | Erick Leal | 16h | 16h | 112,000 | 112,000 |
| 11 | 1.1.4.1 | Crud | manual | 1d | 2018-09-25 A | 2018-09-25 A |  | 100% |  |  |  | Erick Leal | 8h | 8h | 56,000 | 56,000 |
| 12 | 1.1.5 | **Clientes / Proveedores** |  | 1d? | 2018-09-25 | 2018-09-25 |  |  |  | 0d |  | Erick Leal | 40h |  | 280,000 |  |
| 13 | 1.1.5.1 | Crud | manual | 1d? | 2018-09-25 | 2018-09-25 |  |  |  |  |  | Erick Leal | 8h |  | 56,000 |  |
| 14 | 1.1.5.2 | Crud contactos | manual | 1d? | 2018-09-25 | 2018-09-25 |  |  |  |  |  | Erick Leal | 8h |  | 56,000 |  |
| 15 | 1.1.5.3 | crud O/P | manual | 1d? | 2018-09-25 | 2018-09-25 |  |  |  |  |  | Erick Leal | 8h |  | 56,000 |  |
| 16 | 1.1.5.4 | crud O/C | manual | 1d? | 2018-09-25 | 2018-09-25 |  |  |  |  |  | Erick Leal | 8h |  | 56,000 |  |
| 17 | 1.1.6 | **Facturas** |  | 1d? | 2018-09-25 | 2018-09-25 |  |  |  | 0d |  | Erick Leal | 24h |  | 168,000 |  |
| 18 | 1.1.6.1 | crud | manual | 1d? | 2018-09-25 | 2018-09-25 |  |  |  |  |  | Erick Leal | 8h |  | 56,000 |  |
| 19 | 1.1.6.2 | carga de Documentos | manual | 1d? | 2018-09-25 | 2018-09-25 |  |  |  |  |  | Erick Leal | 8h |  | 56,000 |  |
| 20 | 1.1.7 | **Presupuesto** |  | 1d? | 2018-09-25 | 2018-09-25 |  |  |  | 0d |  | Erick Leal | 24h |  | 168,000 |  |
| 21 | 1.1.7.1 | carga automatica | manual | 1d? | 2018-09-25 | 2018-09-25 |  |  |  |  |  | Erick Leal | 8h |  | 56,000 |  |
| 22 | 1.1.7.2 | presupuesto proyectado | manual | 1d? | 2018-09-25 | 2018-09-25 |  |  |  |  |  | Erick Leal | 8h |  | 56,000 |  |
| 23 | 1.1.8 | **Inventario** |  | 1d? | 2018-09-25 | 2018-09-25 |  |  |  | 0d |  | Erick Leal | 24h |  | 168,000 |  |
| 24 | 1.1.8.1 | crud | manual | 1d? | 2018-09-25 | 2018-09-25 |  |  |  |  |  | Erick Leal | 8h |  | 56,000 |  |
| 25 | 1.1.8.2 | asignar recursos | manual | 1d? | 2018-09-25 | 2018-09-25 |  |  |  |  |  | Erick Leal | 8h |  | 56,000 |  |

| ID | WBS | Task | Type | Duration | Start | Finish | Complete | Total slack | Resources | Work | Actual work | Cost | Actual cost |
| --- | --- | --- | --- | --- | --- | --- | --- | --- | --- | --- | --- | --- | --- |
| 26 | 1.1.9 | **RRHH** |  | 1d | 2018-09-25 A | 2018-09-25 A | 100% |  | Erick Leal | 24h | 24h | 168,000 | 168,000 |
| 27 | 1.1.9.1 | crud | manual | 1d | 2018-09-25 A | 2018-09-25 A | 100% |  | Erick Leal | 8h | 8h | 56,000 | 56,000 |
| 28 | 1.1.9.2 | Carga de Documentos | manual | 1d | 2018-09-25 A | 2018-09-25 A | 100% |  | Erick Leal | 8h | 8h | 56,000 | 56,000 |
| 29 | 1.1.10 | **Formularios y solicitudes** |  | 1d? | 2018-09-25 | 2018-09-25 |  | 0d | Erick Leal | 32h |  | 224,000 |  |
| 30 | 1.1.10.1 | Crud Formularios | manual | 1d? | 2018-09-25 | 2018-09-25 |  |  | Erick Leal | 8h |  | 56,000 |  |
| 31 | 1.1.10.2 | Crud Solicitudes | manual | 1d? | 2018-09-25 | 2018-09-25 |  |  | Erick Leal | 8h |  | 56,000 |  |
| 32 | 1.1.10.3 | Autorizaciones | manual | 1d? | 2018-09-25 | 2018-09-25 |  |  | Erick Leal | 8h |  | 56,000 |  |
| 33 | 1.2 | **Hito II** |  | 1d? | 2018-09-25 | 2018-09-25 |  | 0d | Erick Leal | 72h |  | 504,000 |  |
| 34 | 1.2.1 | **Informes** |  | 1d? | 2018-09-25 | 2018-09-25 |  | 0d | Erick Leal | 64h |  | 448,000 |  |
| 35 | 1.2.1.1 | **Dashboard (graficos)** |  | 1d? | 2018-09-25 | 2018-09-25 |  | 0d | Erick Leal | 56h |  | 392,000 |  |
| 36 | 1.2.1.1.1 | **Proximos Pagos** |  | 1d? | 2018-09-25 | 2018-09-25 |  | 0d | Erick Leal | 48h |  | 336,000 |  |
| 37 | 1.2.1.1.1.1 | dias | manual | 1d? | 2018-09-25 | 2018-09-25 |  |  | Erick Leal | 8h |  | 56,000 |  |
| 38 | 1.2.1.1.1.2 | semanas | manual | 1d? | 2018-09-25 | 2018-09-25 |  |  | Erick Leal | 8h |  | 56,000 |  |
| 39 | 1.2.1.1.1.3 | mes | manual | 1d? | 2018-09-25 | 2018-09-25 |  |  | Erick Leal | 8h |  | 56,000 |  |
| 40 | 1.2.1.1.1.4 | principales gastos | manual | 1d? | 2018-09-25 | 2018-09-25 |  |  | Erick Leal | 8h |  | 56,000 |  |
| 41 | 1.2.1.1.1.5 | utilidades | manual | 1d? | 2018-09-25 | 2018-09-25 |  |  | Erick Leal | 8h |  | 56,000 |  |
| 42 | 1.3 | **Hito III** |  | 1d? | 2018-09-25 | 2018-09-25 |  | 0d | Erick Leal | 120h |  | 840,000 |  |
| 43 | 1.3.1 | **Alarmas** |  | 1d? | 2018-09-25 | 2018-09-25 |  | 0d | Erick Leal | 112h |  | 784,000 |  |
| 44 | 1.3.1.1 | **Pago de cotizaciones** |  | 1d? | 2018-09-25 | 2018-09-25 |  | 0d | Erick Leal | 32h |  | 224,000 |  |
| 45 | 1.3.1.1.1 | email | manual | 1d? | 2018-09-25 | 2018-09-25 |  |  | Erick Leal | 8h |  | 56,000 |  |
| 46 | 1.3.1.1.2 | pantalla | manual | 1d? | 2018-09-25 | 2018-09-25 |  |  | Erick Leal | 8h |  | 56,000 |  |
| 47 | 1.3.1.1.3 | sms | manual | 1d? | 2018-09-25 | 2018-09-25 |  |  | Erick Leal | 8h |  | 56,000 |  |
| 48 | 1.3.1.2 | **Pago IVA** |  | 1d? | 2018-09-25 | 2018-09-25 |  | 0d | Erick Leal | 32h |  | 224,000 |  |
| 49 | 1.3.1.2.1 | Email | manual | 1d? | 2018-09-25 | 2018-09-25 |  |  | Erick Leal | 8h |  | 56,000 |  |
| 50 | 1.3.1.2.2 | sms | manual | 1d? | 2018-09-25 | 2018-09-25 |  |  | Erick Leal | 8h |  | 56,000 |  |
| 51 | 1.3.1.2.3 | pantalla | manual | 1d? | 2018-09-25 | 2018-09-25 |  |  | Erick Leal | 8h |  | 56,000 |  |

| ID | WBS | Task | Type | Duration | Start | Finish | Total slack | Resources | Work | Cost |
| --- | --- | --- | --- | --- | --- | --- | --- | --- | --- | --- |
| 52 | 1.3.1.3 | **Pago Sueldo** |  | 1d? | 2018-09-25 | 2018-09-25 | 0d | Erick Leal | 8h | 56,000 |
| 53 | 1.3.1.3.1 | email | manual | 1d? | 2018-09-25 | 2018-09-25 |  |  |  |  |
| 54 | 1.3.1.3.2 | sms | manual | 1d? | 2018-09-25 | 2018-09-25 |  |  |  |  |
| 55 | 1.3.1.3.3 | pantall | manual | 1d? | 2018-09-25 | 2018-09-25 |  |  |  |  |
| 56 | 1.3.1.4 | **Pago Proveedores** |  | 1d? | 2018-09-25 | 2018-09-25 | 0d | Erick Leal | 32h | 224,000 |
| 57 | 1.3.1.4.1 | email | manual | 1d? | 2018-09-25 | 2018-09-25 |  | Erick Leal | 8h | 56,000 |
| 58 | 1.3.1.4.2 | sms | manual | 1d? | 2018-09-25 | 2018-09-25 |  | Erick Leal | 8h | 56,000 |
| 59 | 1.3.1.4.3 | pantalla | manual | 1d? | 2018-09-25 | 2018-09-25 |  | Erick Leal | 8h | 56,000 |
| 60 | 1.4 | **Hito IV** |  | 30.5d | 2018-11-26 | 2019-01-07 |  | Erick Leal | 488h | 3,416,000 |
| 61 | 1.4.1 | Prueba | manual | 30.5d | 2018-11-26 | 2019-01-07 |  | Erick Leal | 244h | 1,708,000 |
